# wbs-barbooking

How a schedule from MS Project changed from version to version. A marks actual dates.

## Version 1 (saved 2023-02-21)

Note of the change: riorganizzazione cartella

| ID | WBS | Task | Duration | Start | Finish | Predecessors | Total float | Constraint |
| --- | --- | --- | --- | --- | --- | --- | --- | --- |
| 1 | 1 | **Bar Booking** | 102d | 2022-12-09 | 2023-04-29 |  |  |  |
| 2 | 1.1 | **AVVIO** | 12d | 2022-12-13 | 2022-12-28 |  | 0d |  |
| 3 | 1.1.1 | **Documenti iniziali di progetto** | 12d | 2022-12-13 | 2022-12-28 |  |  |  |
| 4 |  | Studio fattibilità | 12d? | 2022-12-13 | 2022-12-28 |  | 120d | start no earlier than 2022-12-13 |
| 5 |  | Analisi contesto | 12d? | 2022-12-13 | 2022-12-28 |  | 120d | start no earlier than 2022-12-13 |
| 6 |  | Analisi dei rischi | 12d? | 2022-12-13 | 2022-12-28 |  | 120d | start no earlier than 2022-12-13 |
| 7 |  | Project Charter | 12d? | 2022-12-13 | 2022-12-28 |  | 120d | start no earlier than 2022-12-13 |
| 8 | 1.2 | **PIANIFICAZIONE** | 35d | 2022-12-29 | 2023-02-15 | 2 |  |  |
| 9 | 1.2.1 | **Documenti iniziali di progetto** | 35d | 2022-12-29 | 2023-02-15 |  |  |  |
| 10 |  | WBS - WP | 1d | 2022-12-29 | 2022-12-29 |  | 119d | start no earlier than 2022-12-29 |
| 11 |  | GANTT | 3d | 2022-12-29 | 2023-01-02 |  | 117d | start no earlier than 2022-12-29 |
| 12 |  | RAM | 1d | 2022-12-29 | 2022-12-29 |  | 119d | start no earlier than 2022-12-29 |
| 13 |  | Stime di costo (BCWS) | 3d | 2022-12-29 | 2023-01-02 |  | 117d | start no earlier than 2022-12-29 |
| 14 |  | Anilisi statistica tramite sondaggio | 2d | 2022-12-29 | 2022-12-30 |  | 118d | start no earlier than 2022-12-29 |
| 15 | 1.3 | **REALIZZAZIONE** | 46d | 2023-02-01 | 2023-04-05 | 8 |  |  |
| 16 |  | Documenti di sviluppo prodotto | 2d | 2023-02-01 | 2023-02-02 |  | 94d | start no earlier than 2023-02-01 |
| 17 |  | requisiti!! | 2d? | 2023-02-01 | 2023-02-02 |  | 94d | start no earlier than 2023-02-01 |
| 18 | 1.3.3 | **Sviluppo prodotto** | 46d | 2023-02-01 | 2023-04-05 |  |  |  |
| 19 | 1.3.3.1 | **Creazione del sito web** | 7d? | 2023-03-30 | 2023-04-07 |  | -13d |  |
| 20 | 1.3.3.1.1 | **Configurazione del dominio** | 0.25d | 2023-04-05 | 2023-04-05 |  | -15d |  |
| 21 |  | Registrazione | 2h | 2023-04-05 | 2023-04-05 |  | -15d | finish no earlier than 2023-04-05 |
| 22 |  | Impostazione DNS | 2h | 2023-04-05 | 2023-04-05 |  | -15d | finish no earlier than 2023-04-05 |
| 23 |  | Controllo connession SSL | 2h | 2023-04-05 | 2023-04-05 |  | -15d | finish no earlier than 2023-04-05 |
| 24 | 1.3.3.1.2 | **Organizzazione spazio web** | 7d | 2023-03-30 | 2023-04-07 |  |  |  |
| 25 |  | Configurazione tema | 5d | 2023-03-30 | 2023-04-05 |  | 50d | finish no earlier than 2023-04-05 |
| 26 |  | Creazione logo | 2d | 2023-04-04 | 2023-04-05 |  | 50d | finish no earlier than 2023-04-05 |
| 27 | 1.3.3.1.2.3 | **Inserimento dei contenuti** | 3d | 2023-04-03 | 2023-04-05 |  | -15d |  |
| 28 |  | Home Page | 3d | 2023-04-03 | 2023-04-05 |  | -15d | finish no earlier than 2023-04-05 |
| 29 |  | Prodotti | 2d | 2023-04-04 | 2023-04-05 |  | -15d | finish no earlier than 2023-04-05 |
| 30 |  | Info (cookie, privacy etc..) | 2d | 2023-04-04 | 2023-04-05 |  | -15d | finish no earlier than 2023-04-05 |
| 31 |  | Configurazione metodi di pagamento | 1d | 2023-04-05 | 2023-04-05 |  | 50d | finish no earlier than 2023-04-05 |
| 32 | 1.3.3.2 | **INTEGRAZIONE CON DATABASE** | 4d | 2023-04-10 | 2023-04-13 | 19 | -17d |  |
| 33 | 1.3.3.2.1 | **Progettazione del database** | 4d | 2023-04-10 | 2023-04-13 |  | -17d |  |
| 34 |  | schema concettuale | 4d | 2023-04-10 | 2023-04-13 |  | -17d | finish no earlier than 2023-04-05 |
| 35 |  | schema logico | 2d | 2023-04-10 | 2023-04-11 |  | -15d | finish no earlier than 2023-04-05 |
| 36 | 1.3.3.2.2 | **creazione e implementazione database** | 3d | 2023-04-10 | 2023-04-12 |  | -16d |  |
| 37 |  | gestione materie prime | 3d | 2023-04-10 | 2023-04-12 |  | -16d | finish no earlier than 2023-04-05 |
| 38 |  | gestione prodotti finiti | 3d | 2023-04-10 | 2023-04-12 |  | -16d | finish no earlier than 2023-04-05 |
| 39 |  | contatti fornitori | 2d | 2023-04-10 | 2023-04-11 |  | -15d | finish no earlier than 2023-04-05 |
| 40 | 1.3.3.3 | **INTEGRAZIONE CASSA** | 44d? | 2023-04-14 | 2023-06-14 | 32 | -17d |  |
| 41 |  | creazione profilo amministratore-cassiere | 44d? | 2023-04-14 | 2023-06-14 |  | -17d | start no earlier than 2023-02-03 |
| 42 |  | implementazione metodi pagamento | 44d? | 2023-04-14 | 2023-06-14 |  | -17d | start no earlier than 2023-02-03 |
| 43 | 1.3.3.3.3 | **INTEGRAZIONE DI ANALISI E STATISTICA** | 44d? | 2023-04-14 | 2023-06-14 | 32 | -17d |  |
| 44 |  | adozione programmi per report periodici | 44d? | 2023-04-14 | 2023-06-14 |  | -17d | start no earlier than 2023-02-03 |
| 45 | 1.3.3.3.4 | **RIORGANIZZAZIONE RISORSE UMANE** | 44d? | 2023-04-14 | 2023-06-14 |  | -17d |  |
| 46 |  | code separate | 44d | 2023-04-14 | 2023-06-14 |  | -17d | start no earlier than 2023-02-03 |
| 47 |  | consegna in classe | 44d? | 2023-04-14 | 2023-06-14 |  | -17d | start no earlier than 2023-02-03 |
| 48 | 1.4 | **COLLAUDO - CHIUSURA** | 18d | 2023-04-06 | 2023-04-29 | 15 |  |  |
| 49 |  | Verbali riunioni | 17d? | 2023-04-06 | 2023-04-29 |  | 33d | finish no earlier than 2023-04-29 |
| 50 |  | Documenti di revisione | 17d? | 2023-04-06 | 2023-04-29 |  | 33d | finish no earlier than 2023-04-29 |
| 51 |  | Testing | 17d? | 2023-04-06 | 2023-04-29 |  | 33d | finish no earlier than 2023-04-29 |
| 52 |  | Chiusura | 17d? | 2023-04-06 | 2023-04-29 |  | 33d | finish no earlier than 2023-04-29 |
| 53 |  | Presentazione e consegna del prodotto finale | 17d? | 2023-04-06 | 2023-04-29 |  | 33d | finish no earlier than 2023-04-29 |

## Version 2 (saved 2023-03-07)

Note of the change: Update wbs

Last finish 2023-06-14 → 2023-04-29 (-46d).

Changed:

| ID | Task | Start | Finish | Duration | Total float | Other |
| --- | --- | --- | --- | --- | --- | --- |
| 1 | **Bar Booking** | 2022-12-09 → 2022-12-13 (+4d) |  | 102d → 99d | none → 0d |  |
| 4 | Studio fattibilità |  |  | 12d? → 12d | 120d → 68d |  |
| 5 | Analisi contesto |  |  | 12d? → 12d | 120d → 68d |  |
| 6 | Analisi dei rischi |  |  | 12d? → 12d | 120d → 68d |  |
| 7 | Project Charter |  |  | 12d? → 12d | 120d → 68d |  |
| 8 | **PIANIFICAZIONE** |  | 2023-02-15 → 2023-01-02 (-44d) | 35d → 3d | none → 68d |  |
| 9 | **Documenti iniziali di progetto** |  | 2023-02-15 → 2023-01-02 (-44d) | 35d → 3d | none → 68d |  |
| 15 | **REALIZZAZIONE** |  | 2023-04-05 → 2023-04-17 (+12d) | 46d → 54d | none → 6d |  |
| 17 | requisiti!! |  |  | 2d? → 2d | 94d → 58d |  |
| 18 | **Sviluppo prodotto** | 2023-02-01 → 2023-03-30 (+57d) | 2023-04-05 → 2023-04-17 (+12d) | 46d → 13d | none → 6d |  |
| 19 | **Creazione del sito web** |  | 2023-04-07 → 2023-04-05 (-2d) | 7d? → 5d | -13d → 6d |  |
| 24 | **Organizzazione spazio web** |  | 2023-04-07 → 2023-04-05 (-2d) | 7d → 5d | none → 6d |  |
| 32 | **INTEGRAZIONE CON DATABASE** | 2023-04-10 → 2023-04-06 (-4d) | 2023-04-13 → 2023-04-11 (-2d) |  | -17d → 6d |  |
| 33 | **Progettazione del database** | 2023-04-10 → 2023-04-06 (-4d) | 2023-04-13 → 2023-04-11 (-2d) |  | -17d → 6d |  |
| 34 | schema concettuale | 2023-04-10 → 2023-04-06 (-4d) | 2023-04-13 → 2023-04-11 (-2d) |  | -17d → 6d | resources none → Gabriela Badarau |
| 35 | schema logico | 2023-04-10 → 2023-04-06 (-4d) | 2023-04-11 → 2023-04-07 (-4d) |  | -15d → 8d | resources none → Gabriela Badarau |
| 36 | **creazione e implementazione database** | 2023-04-10 → 2023-04-06 (-4d) | 2023-04-12 → 2023-04-10 (-2d) |  | -16d → 7d |  |
| 37 | gestione materie prime | 2023-04-10 → 2023-04-06 (-4d) | 2023-04-12 → 2023-04-10 (-2d) |  | -16d → 7d | resources none → Gabriela Badarau |
| 38 | gestione prodotti finiti | 2023-04-10 → 2023-04-06 (-4d) | 2023-04-12 → 2023-04-10 (-2d) |  | -16d → 7d | resources none → Gabriela Badarau |
| 39 | contatti fornitori | 2023-04-10 → 2023-04-06 (-4d) | 2023-04-11 → 2023-04-07 (-4d) |  | -15d → 8d | resources none → Gabriela Badarau |
| 40 | **INTEGRAZIONE CASSA** | 2023-04-14 → 2023-04-12 (-2d) | 2023-06-14 → 2023-04-17 (-58d) | 44d? → 4d | -17d → 6d |  |
| 41 | creazione profilo amministratore-cassiere | 2023-04-14 → 2023-04-12 (-2d) | 2023-06-14 → 2023-04-12 (-63d) | 44d? → 1d | -17d → 9d |  |
| 42 | implementazione metodi pagamento | 2023-04-14 → 2023-04-12 (-2d) | 2023-06-14 → 2023-04-12 (-63d) | 44d? → 1d | -17d → 9d | resources none → Lorenzo Marcato |
| 43 | **INTEGRAZIONE DI ANALISI E STATISTICA** | 2023-04-14 → 2023-04-12 (-2d) | 2023-06-14 → 2023-04-13 (-62d) | 44d? → 2d | -17d → 8d |  |
| 44 | adozione programmi per report periodici | 2023-04-14 → 2023-04-12 (-2d) | 2023-06-14 → 2023-04-13 (-62d) | 44d? → 2d | -17d → 8d |  |
| 45 | **RIORGANIZZAZIONE RISORSE UMANE** | 2023-04-14 → 2023-04-12 (-2d) | 2023-06-14 → 2023-04-17 (-58d) | 44d? → 4d | -17d → 6d |  |
| 46 | code separate | 2023-04-14 → 2023-04-12 (-2d) | 2023-06-14 → 2023-04-17 (-58d) | 44d → 4d | -17d → 6d | resources none → Lorenzo Marcato |
| 47 | consegna in classe | 2023-04-14 → 2023-04-12 (-2d) | 2023-06-14 → 2023-04-17 (-58d) | 44d? → 4d | -17d → 6d | resources none → Mirko Cerati |
| 48 | **COLLAUDO - CHIUSURA** | 2023-04-06 → 2023-04-26 (+20d) |  | 18d → 3d | none → 0d |  |
| 49 | Verbali riunioni | 2023-04-06 → 2023-04-27 (+21d) |  | 17d? → 2d | 33d → 0d | resources none → Gioia Bertin |
| 50 | Documenti di revisione | 2023-04-06 → 2023-04-27 (+21d) |  | 17d? → 2d | 33d → 0d | resources none → Gabriela Badarau; Gioia Bertin |
| 51 | Testing | 2023-04-06 → 2023-04-26 (+20d) |  | 17d? → 3d | 33d → 0d | resources none → Gioia Bertin; Lorenzo Marcato; Mirko Cerati |
| 52 | Chiusura | 2023-04-06 → 2023-04-27 (+21d) |  | 17d? → 2d | 33d → 0d | resources none → Gabriela Badarau; Gioia Bertin; Lorenzo Marcato; Mirko Cerati |
| 53 | Presentazione e consegna del prodotto finale | 2023-04-06 → 2023-04-28 (+22d) |  | 17d? → 1d | 33d → 0d | resources none → Gabriela Badarau; Gioia Bertin; Lorenzo Marcato; Mirko Cerati |

## Version 3 (saved 2023-03-28)

Last finish 2023-04-29 → 2023-05-17 (+18d).

Changed:

| ID | Task | Start | Finish | Duration | Total float | Predecessors | Other |
| --- | --- | --- | --- | --- | --- | --- | --- |
| 1 | **Bar Booking** |  | 2023-04-29 → 2023-05-17 (+18d) | 99d → 111.25d |  |  |  |
| 2 | **AVVIO** |  | 2022-12-28 → 2022-12-20 (-8d) | 12d → 6d | 68d → 68.75d |  |  |
| 3 | **Documenti iniziali di progetto** |  | 2022-12-28 → 2022-12-20 (-8d) | 12d → 6d | 68d → 68.75d |  |  |
| 4 | Studio fattibilità |  | 2022-12-28 → 2022-12-15 (-13d) | 12d → 3d | 68d → 68.75d |  | resources Gabriela Badarau; Gioia Bertin → Gioia Bertin; Gabriela Badarau; Lorenzo Marcato; Mirko Cerati |
| 5 | Analisi contesto | 2022-12-13 → 2022-12-16 (+3d) | 2022-12-28 → 2022-12-20 (-8d) | 12d → 3d | 68d → 68.75d | none → 4 | resources Gioia Bertin → Mirko Cerati |
| 6 | Analisi dei rischi | 2022-12-13 → 2022-12-16 (+3d) | 2022-12-28 → 2022-12-20 (-8d) | 12d → 3d | 68d → 68.75d | none → 4 | resources Gabriela Badarau; Gioia Bertin → Gabriela Badarau |
| 7 | Project Charter | 2022-12-13 → 2022-12-16 (+3d) | 2022-12-28 → 2022-12-20 (-8d) | 12d → 3d | 68d → 68.75d | none → 4 |  |
| 8 | **PIANIFICAZIONE** |  | 2023-01-02 → 2023-01-06 (+4d) | 3d → 7d | 68d → 62.75d |  |  |
| 9 | **Documenti iniziali di progetto** |  | 2023-01-02 → 2023-01-06 (+4d) | 3d → 7d | 68d → 62.75d | none → 3 |  |
| 10 | WBS - WP |  |  |  | 70d → 64.75d | none → 7 | resources Gabriela Badarau; Gioia Bertin → Gioia Bertin |
| 11 | GANTT |  |  |  | 68d → 62.75d | none → 6 | resources Gabriela Badarau; Gioia Bertin → Gabriela Badarau |
| 12 | RAM | 2022-12-29 → 2023-01-03 (+5d) | 2022-12-29 → 2023-01-03 (+5d) |  | 70d → 62.75d | none → 10, 11 |  |
| 13 | Stime di costo (BCWS) | 2022-12-29 → 2023-01-04 (+6d) | 2023-01-02 → 2023-01-06 (+4d) |  | 68d → 62.75d | none → 10, 11, 12 | resources Gabriela Badarau; Gioia Bertin; Lorenzo Marcato → Gabriela Badarau |
| 14 | Anilisi statistica tramite sondaggio | 2022-12-29 → 2023-01-04 (+6d) | 2022-12-30 → 2023-01-05 (+6d) |  | 69d → 63.75d | none → 12 |  |
| 15 | **REALIZZAZIONE** |  | 2023-04-17 → 2023-05-09 (+22d) | 54d → 69.25d | 6d → 0d |  |  |
| 18 | **Sviluppo prodotto** | 2023-03-30 → 2023-04-05 (+6d) | 2023-04-17 → 2023-05-09 (+22d) | 13d → 23.5d | 6d → 0d | none → 2, 8 |  |
| 19 | **Creazione del sito web** | 2023-03-30 → 2023-04-05 (+6d) | 2023-04-05 → 2023-04-17 (+12d) | 5d → 7.5d | 6d → 0d |  |  |
| 20 | **Configurazione del dominio** |  | 2023-04-05 → 2023-04-06 (+1d) | 0.25d → 0.5d | 6d → 0d |  |  |
| 23 | Controllo connession SSL | 2023-04-05 → 2023-04-06 (+1d) | 2023-04-05 → 2023-04-06 (+1d) |  | 6d → 0d | none → 21, 22 |  |
| 24 | **Organizzazione spazio web** | 2023-03-30 → 2023-04-06 (+7d) | 2023-04-05 → 2023-04-17 (+12d) | 5d → 7d | 6d → 0d | none → 20 |  |
| 25 | Configurazione tema | 2023-03-30 → 2023-04-06 (+7d) | 2023-04-05 → 2023-04-13 (+8d) |  | 6d → 0d | none → 23, 20 |  |
| 26 | Creazione logo | 2023-04-04 → 2023-04-06 (+2d) | 2023-04-05 → 2023-04-10 (+5d) |  | 6d → 0d | none → 20 |  |
| 27 | **Inserimento dei contenuti** | 2023-04-03 → 2023-04-10 (+7d) | 2023-04-05 → 2023-04-17 (+12d) | 3d → 5d | 6d → 0d |  |  |
| 28 | Home Page | 2023-04-03 → 2023-04-10 (+7d) | 2023-04-05 → 2023-04-13 (+8d) |  | 6d → 0d | none → 22, 26 |  |
| 29 | Prodotti | 2023-04-04 → 2023-04-13 (+9d) | 2023-04-05 → 2023-04-17 (+12d) |  | 6d → 0d | none → 28 |  |
| 30 | Info (cookie, privacy etc..) | 2023-04-04 → 2023-04-13 (+9d) | 2023-04-05 → 2023-04-17 (+12d) |  | 6d → 0d | none → 25 |  |
| 31 | Configurazione metodi di pagamento | 2023-04-05 → 2023-04-13 (+8d) | 2023-04-05 → 2023-04-14 (+9d) |  | 6d → 1d | none → 28 | resources Lorenzo Marcato; Gioia Bertin → Lorenzo Marcato |
| 32 | **INTEGRAZIONE CON DATABASE** | 2023-04-06 → 2023-04-17 (+11d) | 2023-04-11 → 2023-05-02 (+21d) | 4d → 11d | 6d → 0d |  |  |
| 33 | **Progettazione del database** | 2023-04-06 → 2023-04-17 (+11d) | 2023-04-11 → 2023-04-25 (+14d) | 4d → 6d | 6d → 0d |  |  |
| 34 | schema concettuale | 2023-04-06 → 2023-04-17 (+11d) | 2023-04-11 → 2023-04-21 (+10d) |  | 6d → 0d | none → 16 |  |
| 35 | schema logico | 2023-04-06 → 2023-04-21 (+15d) | 2023-04-07 → 2023-04-25 (+18d) |  | 8d → 0d | none → 34 |  |
| 36 | **creazione e implementazione database** | 2023-04-06 → 2023-04-25 (+19d) | 2023-04-10 → 2023-05-02 (+22d) | 3d → 5d | 7d → 0d |  |  |
| 37 | gestione materie prime | 2023-04-06 → 2023-04-25 (+19d) | 2023-04-10 → 2023-04-27 (+17d) | 3d → 2d | 7d → 0d | none → 35 |  |
| 38 | gestione prodotti finiti | 2023-04-06 → 2023-04-27 (+21d) | 2023-04-10 → 2023-05-01 (+21d) | 3d → 2d | 7d → 0d | none → 37 |  |
| 39 | contatti fornitori | 2023-04-06 → 2023-05-01 (+25d) | 2023-04-07 → 2023-05-02 (+25d) | 2d → 1d | 8d → 0d | none → 38 |  |
| 40 | **INTEGRAZIONE CASSA** | 2023-04-12 → 2023-05-02 (+20d) | 2023-04-17 → 2023-05-09 (+22d) | 4d → 5d | 6d → 0d |  |  |
| 41 | creazione profilo amministratore-cassiere | 2023-04-12 → 2023-05-02 (+20d) | 2023-04-12 → 2023-05-03 (+21d) |  | 9d → 0d | none → 30 |  |
| 42 | implementazione metodi pagamento | 2023-04-12 → 2023-05-02 (+20d) | 2023-04-12 → 2023-05-03 (+21d) |  | 9d → 0d | none → 31 |  |
| 43 | **INTEGRAZIONE DI ANALISI E STATISTICA** | 2023-04-12 → 2023-05-02 (+20d) | 2023-04-13 → 2023-05-04 (+21d) |  | 8d → 3d |  |  |
| 44 | adozione programmi per report periodici | 2023-04-12 → 2023-05-02 (+20d) | 2023-04-13 → 2023-05-04 (+21d) |  | 8d → 3d |  | resources none → Gabriela Badarau |
| 45 | **RIORGANIZZAZIONE RISORSE UMANE** | 2023-04-12 → 2023-05-03 (+21d) | 2023-04-17 → 2023-05-09 (+22d) |  | 6d → 0d |  |  |
| 46 | code separate | 2023-04-12 → 2023-05-03 (+21d) | 2023-04-17 → 2023-05-09 (+22d) |  | 6d → 0d | none → 42 |  |
| 47 | consegna in classe | 2023-04-12 → 2023-05-03 (+21d) | 2023-04-17 → 2023-05-09 (+22d) |  | 6d → 0d | none → 41 |  |
| 48 | **COLLAUDO - CHIUSURA** | 2023-04-26 → 2023-05-09 (+13d) | 2023-04-29 → 2023-05-17 (+18d) | 3d → 6d |  |  |  |
| 49 | Verbali riunioni | 2023-04-27 → 2023-05-09 (+12d) | 2023-04-29 → 2023-05-11 (+12d) |  | 0d → 1d | none → 44 | resources Gioia Bertin → Gabriela Badarau |
| 50 | Documenti di revisione | 2023-04-27 → 2023-05-09 (+12d) | 2023-04-29 → 2023-05-11 (+12d) |  | 0d → 1d |  | resources Gabriela Badarau; Gioia Bertin → Gioia Bertin |
| 51 | Testing | 2023-04-26 → 2023-05-09 (+13d) | 2023-04-29 → 2023-05-12 (+13d) |  |  | none → 46, 47 | resources Gioia Bertin; Lorenzo Marcato; Mirko Cerati → Lorenzo Marcato; Mirko Cerati |
| 52 | Chiusura | 2023-04-27 → 2023-05-12 (+15d) | 2023-04-29 → 2023-05-16 (+17d) |  |  | none → 50, 49, 51 |  |
| 53 | Presentazione e consegna del prodotto finale | 2023-04-28 → 2023-05-16 (+18d) | 2023-04-29 → 2023-05-17 (+18d) |  |  | none → 52 |  |

## Version 4 (saved 2023-03-31)

Last finish stays 2023-05-17.

Changed:

| ID | Task | Start | Finish | Duration | Total float | Predecessors | Other |
| --- | --- | --- | --- | --- | --- | --- | --- |
| 2 | **AVVIO** |  | 2022-12-20 → 2022-12-19 (-1d) | 6d → 5d | 68.75d → 70.75d |  |  |
| 3 | **Documenti iniziali di progetto** |  | 2022-12-20 → 2022-12-19 (-1d) | 6d → 5d | 68.75d → 70.75d |  |  |
| 4 | Studio fattibilità |  | 2022-12-15 → 2022-12-14 (-1d) | 3d → 2d | 68.75d → 70.75d |  |  |
| 5 | Analisi contesto | 2022-12-16 → 2022-12-15 (-1d) | 2022-12-20 → 2022-12-16 (-4d) | 3d → 2d | 68.75d → 71.75d |  |  |
| 6 | Analisi dei rischi | 2022-12-16 → 2022-12-15 (-1d) | 2022-12-20 → 2022-12-16 (-4d) | 3d → 2d | 68.75d → 71.75d |  |  |
| 7 | Project Charter | 2022-12-16 → 2022-12-15 (-1d) | 2022-12-20 → 2022-12-19 (-1d) |  | 68.75d → 70.75d |  |  |
| 8 | **PIANIFICAZIONE** |  | 2023-01-06 → 2023-01-05 (-1d) | 7d → 6d | 62.75d → 63.75d |  |  |
| 9 | **Documenti iniziali di progetto** |  | 2023-01-06 → 2023-01-05 (-1d) | 7d → 6d | 62.75d → 63.75d |  |  |
| 11 | GANTT |  | 2023-01-02 → 2022-12-30 (-3d) | 3d → 2d | 62.75d → 63.75d |  |  |
| 12 | RAM | 2023-01-03 → 2023-01-02 (-1d) | 2023-01-03 → 2023-01-02 (-1d) |  | 62.75d → 63.75d |  |  |
| 13 | Stime di costo (BCWS) | 2023-01-04 → 2023-01-03 (-1d) | 2023-01-06 → 2023-01-05 (-1d) |  | 62.75d → 63.75d | 10, 11, 12 → 12 |  |
| 14 | Anilisi statistica tramite sondaggio | 2023-01-04 → 2023-01-03 (-1d) | 2023-01-05 → 2023-01-04 (-1d) |  | 63.75d → 64.75d |  |  |
| 15 | **REALIZZAZIONE** |  |  |  |  | 8 → none |  |
| 16 | Documenti di sviluppo prodotto |  |  |  | 58d → 51.25d | none → 13, 14 |  |
| 17 | requisiti!! | 2023-02-01 → 2023-02-03 (+2d) | 2023-02-02 → 2023-02-06 (+4d) |  | 58d → 65.25d | none → 16 | resources none → Gabriela Badarau; Gioia Bertin |
| 18 | **Sviluppo prodotto** |  |  |  |  | 2, 8 → 8 |  |

## Version 5 (saved 2023-04-18)

Note of the change: COREZZIONE WBS

Last finish 2023-05-17 → 2023-03-24 (-54d).

Changed:

| ID | Task | Start | Finish | Duration | Total float | Predecessors | Other |
| --- | --- | --- | --- | --- | --- | --- | --- |
| 1 | **Bar Booking** | 2022-12-13 → 2023-01-24 (+42d) | 2023-05-17 → 2023-03-24 (-54d) | 111.25d → 43.25d |  |  |  |
| 2 | **AVVIO** | 2022-12-13 → 2023-01-24 (+42d) | 2022-12-19 → 2023-01-30 (+42d) |  | 70.75d → 0d |  |  |
| 3 | **Documenti iniziali di progetto** | 2022-12-13 → 2023-01-24 (+42d) | 2022-12-19 → 2023-01-30 (+42d) |  | 70.75d → 0d |  |  |
| 4 | Studio fattibilità | 2022-12-13 → 2023-01-24 (+42d) | 2022-12-14 → 2023-01-25 (+42d) |  | 70.75d → 0d |  | constraint start no earlier than 2022-12-13 → none |
| 5 | Analisi contesto | 2022-12-15 → 2023-01-26 (+42d) | 2022-12-16 → 2023-01-27 (+42d) |  | 71.75d → 1d |  | constraint start no earlier than 2022-12-13 → none |
| 6 | Analisi dei rischi | 2022-12-15 → 2023-01-26 (+42d) | 2022-12-16 → 2023-01-27 (+42d) |  | 71.75d → 1d |  | constraint start no earlier than 2022-12-13 → none |
| 7 | Project Charter | 2022-12-15 → 2023-01-26 (+42d) | 2022-12-19 → 2023-01-30 (+42d) |  | 70.75d → 0d |  | constraint start no earlier than 2022-12-13 → none |
| 8 | **PIANIFICAZIONE** | 2022-12-29 → 2023-01-31 (+33d) | 2023-01-05 → 2023-02-07 (+33d) |  | 63.75d → 0d |  |  |
| 9 | **Documenti iniziali di progetto** | 2022-12-29 → 2023-01-31 (+33d) | 2023-01-05 → 2023-02-07 (+33d) |  | 63.75d → 0d |  |  |
| 10 | WBS - WP | 2022-12-29 → 2023-01-31 (+33d) | 2022-12-29 → 2023-01-31 (+33d) |  | 64.75d → 1d |  | constraint start no earlier than 2022-12-29 → none |
| 11 | GANTT | 2022-12-29 → 2023-01-31 (+33d) | 2022-12-30 → 2023-02-01 (+33d) |  | 63.75d → 0d |  | constraint start no earlier than 2022-12-29 → none |
| 12 | RAM | 2023-01-02 → 2023-02-02 (+31d) | 2023-01-02 → 2023-02-02 (+31d) |  | 63.75d → 0d |  | constraint start no earlier than 2022-12-29 → none |
| 13 | Stime di costo (BCWS) | 2023-01-03 → 2023-02-03 (+31d) | 2023-01-05 → 2023-02-07 (+33d) |  | 63.75d → 0d |  | constraint start no earlier than 2022-12-29 → none |
| 14 | Anilisi statistica tramite sondaggio | 2023-01-03 → 2023-02-03 (+31d) | 2023-01-04 → 2023-02-06 (+33d) |  | 64.75d → 1d |  | constraint start no earlier than 2022-12-29 → none |
| 15 | **REALIZZAZIONE** | 2023-02-01 → 2023-02-07 (+6d) | 2023-05-09 → 2023-03-16 (-54d) | 69.25d → 27.25d |  |  |  |
| 16 | Documenti di sviluppo prodotto | 2023-02-01 → 2023-02-08 (+7d) | 2023-02-02 → 2023-02-09 (+7d) |  | 51.25d → 0d | 13, 14 → 13, 14, 5 | constraint start no earlier than 2023-02-01 → none |
| 17 | requisiti!! | 2023-02-03 → 2023-02-10 (+7d) | 2023-02-06 → 2023-02-13 (+7d) |  | 65.25d → 22.25d |  | constraint start no earlier than 2023-02-01 → none |
| 18 | **Sviluppo prodotto** | 2023-04-05 → 2023-02-07 (-57d) | 2023-05-09 → 2023-03-16 (-54d) | 23.5d → 27.25d |  | 8 → none |  |
| 19 | **Creazione del sito web** | 2023-04-05 → 2023-02-07 (-57d) | 2023-04-17 → 2023-02-22 (-54d) | 7.5d → 11.25d |  |  |  |
| 20 | **Configurazione del dominio** | 2023-04-05 → 2023-02-07 (-57d) | 2023-04-06 → 2023-02-13 (-52d) | 0.5d → 4.25d |  |  |  |
| 21 | Registrazione | 2023-04-05 → 2023-02-10 (-54d) | 2023-04-05 → 2023-02-10 (-54d) | 2h → 8h |  | none → 16 | constraint finish no earlier than 2023-04-05 → none |
| 22 | Impostazione DNS | 2023-04-05 → 2023-02-07 (-57d) | 2023-04-05 → 2023-02-07 (-57d) | 2h → 8h | 0d → 3d | none → 14 | constraint finish no earlier than 2023-04-05 → none |
| 23 | Controllo connession SSL | 2023-04-06 → 2023-02-13 (-52d) | 2023-04-06 → 2023-02-13 (-52d) |  |  |  | constraint finish no earlier than 2023-04-05 → none |
| 24 | **Organizzazione spazio web** | 2023-04-06 → 2023-02-13 (-52d) | 2023-04-17 → 2023-02-22 (-54d) |  |  |  |  |
| 25 | Configurazione tema | 2023-04-06 → 2023-02-13 (-52d) | 2023-04-13 → 2023-02-20 (-52d) |  |  |  | constraint finish no earlier than 2023-04-05 → none |
| 26 | Creazione logo | 2023-04-06 → 2023-02-13 (-52d) | 2023-04-10 → 2023-02-15 (-54d) |  |  |  | constraint finish no earlier than 2023-04-05 → none |
| 27 | **Inserimento dei contenuti** | 2023-04-10 → 2023-02-15 (-54d) | 2023-04-17 → 2023-02-22 (-54d) |  |  |  |  |
| 28 | Home Page | 2023-04-10 → 2023-02-15 (-54d) | 2023-04-13 → 2023-02-20 (-52d) |  |  |  | constraint finish no earlier than 2023-04-05 → none |
| 29 | Prodotti | 2023-04-13 → 2023-02-20 (-52d) | 2023-04-17 → 2023-02-22 (-54d) |  |  |  | constraint finish no earlier than 2023-04-05 → none |
| 30 | Info (cookie, privacy etc..) | 2023-04-13 → 2023-02-20 (-52d) | 2023-04-17 → 2023-02-22 (-54d) |  |  |  | constraint finish no earlier than 2023-04-05 → none |
| 31 | Configurazione metodi di pagamento | 2023-04-13 → 2023-02-20 (-52d) | 2023-04-14 → 2023-02-21 (-52d) |  |  |  | constraint finish no earlier than 2023-04-05 → none |
| 32 | **INTEGRAZIONE CON DATABASE** | 2023-04-17 → 2023-02-22 (-54d) | 2023-05-02 → 2023-03-09 (-54d) |  |  |  |  |
| 33 | **Progettazione del database** | 2023-04-17 → 2023-02-22 (-54d) | 2023-04-25 → 2023-03-02 (-54d) |  |  |  |  |
| 34 | schema concettuale | 2023-04-17 → 2023-02-22 (-54d) | 2023-04-21 → 2023-02-28 (-52d) |  |  |  | constraint finish no earlier than 2023-04-05 → none |
| 35 | schema logico | 2023-04-21 → 2023-02-28 (-52d) | 2023-04-25 → 2023-03-02 (-54d) |  |  |  | constraint finish no earlier than 2023-04-05 → none |
| 36 | **creazione e implementazione database** | 2023-04-25 → 2023-03-02 (-54d) | 2023-05-02 → 2023-03-09 (-54d) |  |  |  |  |
| 37 | gestione materie prime | 2023-04-25 → 2023-03-02 (-54d) | 2023-04-27 → 2023-03-06 (-52d) |  |  |  | constraint finish no earlier than 2023-04-05 → none |
| 38 | gestione prodotti finiti | 2023-04-27 → 2023-03-06 (-52d) | 2023-05-01 → 2023-03-08 (-54d) |  |  |  | constraint finish no earlier than 2023-04-05 → none |
| 39 | contatti fornitori | 2023-05-01 → 2023-03-08 (-54d) | 2023-05-02 → 2023-03-09 (-54d) |  |  |  | constraint finish no earlier than 2023-04-05 → none |
| 40 | **INTEGRAZIONE CASSA** | 2023-05-02 → 2023-03-09 (-54d) | 2023-05-09 → 2023-03-16 (-54d) |  |  |  |  |
| 41 | creazione profilo amministratore-cassiere | 2023-05-02 → 2023-03-09 (-54d) | 2023-05-03 → 2023-03-10 (-54d) |  |  |  | constraint start no earlier than 2023-02-03 → none |
| 42 | implementazione metodi pagamento | 2023-05-02 → 2023-03-09 (-54d) | 2023-05-03 → 2023-03-10 (-54d) |  |  |  | constraint start no earlier than 2023-02-03 → none |
| 43 | **INTEGRAZIONE DI ANALISI E STATISTICA** | 2023-05-02 → 2023-03-09 (-54d) | 2023-05-04 → 2023-03-13 (-52d) |  |  |  |  |
| 44 | adozione programmi per report periodici | 2023-05-02 → 2023-03-09 (-54d) | 2023-05-04 → 2023-03-13 (-52d) |  |  |  | constraint start no earlier than 2023-02-03 → none |
| 45 | **RIORGANIZZAZIONE RISORSE UMANE** | 2023-05-03 → 2023-03-10 (-54d) | 2023-05-09 → 2023-03-16 (-54d) |  |  |  |  |
| 46 | code separate | 2023-05-03 → 2023-03-10 (-54d) | 2023-05-09 → 2023-03-16 (-54d) |  |  |  | constraint start no earlier than 2023-02-03 → none |
| 47 | consegna in classe | 2023-05-03 → 2023-03-10 (-54d) | 2023-05-09 → 2023-03-16 (-54d) |  |  |  | constraint start no earlier than 2023-02-03 → none |
| 48 | **COLLAUDO - CHIUSURA** | 2023-05-09 → 2023-03-16 (-54d) | 2023-05-17 → 2023-03-24 (-54d) |  |  |  |  |
| 49 | Verbali riunioni | 2023-05-09 → 2023-03-16 (-54d) | 2023-05-11 → 2023-03-20 (-52d) |  |  |  | constraint finish no earlier than 2023-04-29 → none |
| 50 | Documenti di revisione | 2023-05-09 → 2023-03-16 (-54d) | 2023-05-11 → 2023-03-20 (-52d) |  |  |  | constraint finish no earlier than 2023-04-29 → none |
| 51 | Testing | 2023-05-09 → 2023-03-16 (-54d) | 2023-05-12 → 2023-03-21 (-52d) |  |  |  | constraint finish no earlier than 2023-04-29 → none |
| 52 | Chiusura | 2023-05-12 → 2023-03-21 (-52d) | 2023-05-16 → 2023-03-23 (-54d) |  |  |  | constraint finish no earlier than 2023-04-29 → none |
| 53 | Presentazione e consegna del prodotto finale | 2023-05-16 → 2023-03-23 (-54d) | 2023-05-17 → 2023-03-24 (-54d) |  |  |  | constraint finish no earlier than 2023-04-29 → none |

## Version 6 (saved 2023-05-09)

Note of the change: AGGIORNAMENTO WBS

Last finish 2023-03-24 → 2023-05-09 (+46d).

Changed:

| ID | Task | Start | Finish | Duration | Total float |
| --- | --- | --- | --- | --- | --- |
| 1 | **Bar Booking** |  | 2023-03-24 → 2023-05-09 (+46d) | 43.25d → 75.25d |  |
| 8 | **PIANIFICAZIONE** |  | 2023-02-07 → 2023-02-17 (+10d) | 6d → 14d |  |
| 9 | **Documenti iniziali di progetto** |  | 2023-02-07 → 2023-02-17 (+10d) | 6d → 14d |  |
| 10 | WBS - WP |  | 2023-01-31 → 2023-02-01 (+1d) | 1d → 2d | 1d → 2d |
| 11 | GANTT |  | 2023-02-01 → 2023-02-03 (+2d) | 2d → 4d |  |
| 12 | RAM | 2023-02-02 → 2023-02-06 (+4d) | 2023-02-02 → 2023-02-09 (+7d) | 1d → 4d |  |
| 13 | Stime di costo (BCWS) | 2023-02-03 → 2023-02-10 (+7d) | 2023-02-07 → 2023-02-17 (+10d) | 3d → 6d |  |
| 14 | Anilisi statistica tramite sondaggio | 2023-02-03 → 2023-02-10 (+7d) | 2023-02-06 → 2023-02-14 (+8d) | 2d → 3d | 1d → 3d |
| 15 | **REALIZZAZIONE** | 2023-02-07 → 2023-02-15 (+8d) | 2023-03-16 → 2023-04-24 (+39d) | 27.25d → 48.25d |  |
| 16 | Documenti di sviluppo prodotto | 2023-02-08 → 2023-02-20 (+12d) | 2023-02-09 → 2023-02-23 (+14d) | 2d → 4d |  |
| 17 | requisiti!! | 2023-02-10 → 2023-02-24 (+14d) | 2023-02-13 → 2023-03-01 (+16d) | 2d → 4d | 22.25d → 37.25d |
| 18 | **Sviluppo prodotto** | 2023-02-07 → 2023-02-15 (+8d) | 2023-03-16 → 2023-04-24 (+39d) | 27.25d → 48.25d |  |
| 19 | **Creazione del sito web** | 2023-02-07 → 2023-02-15 (+8d) | 2023-02-22 → 2023-03-15 (+21d) | 11.25d → 20.25d |  |
| 20 | **Configurazione del dominio** | 2023-02-07 → 2023-02-15 (+8d) | 2023-02-13 → 2023-02-27 (+14d) | 4.25d → 8.25d |  |
| 21 | Registrazione | 2023-02-10 → 2023-02-24 (+14d) | 2023-02-10 → 2023-02-24 (+14d) |  |  |
| 22 | Impostazione DNS | 2023-02-07 → 2023-02-15 (+8d) | 2023-02-07 → 2023-02-15 (+8d) |  | 3d → 7d |
| 23 | Controllo connession SSL | 2023-02-13 → 2023-02-27 (+14d) | 2023-02-13 → 2023-02-27 (+14d) |  |  |
| 24 | **Organizzazione spazio web** | 2023-02-13 → 2023-02-27 (+14d) | 2023-02-22 → 2023-03-15 (+21d) | 7d → 12d |  |
| 25 | Configurazione tema | 2023-02-13 → 2023-02-27 (+14d) | 2023-02-20 → 2023-03-13 (+21d) | 5d → 10d |  |
| 26 | Creazione logo | 2023-02-13 → 2023-02-27 (+14d) | 2023-02-15 → 2023-03-03 (+16d) | 2d → 4d | 0d → 3d |
| 27 | **Inserimento dei contenuti** | 2023-02-15 → 2023-03-03 (+16d) | 2023-02-22 → 2023-03-15 (+21d) | 5d → 8d |  |
| 28 | Home Page | 2023-02-15 → 2023-03-03 (+16d) | 2023-02-20 → 2023-03-08 (+16d) |  | 0d → 3d |
| 29 | Prodotti | 2023-02-20 → 2023-03-08 (+16d) | 2023-02-22 → 2023-03-10 (+16d) |  | 0d → 3d |
| 30 | Info (cookie, privacy etc..) | 2023-02-20 → 2023-03-13 (+21d) | 2023-02-22 → 2023-03-15 (+21d) |  |  |
| 31 | Configurazione metodi di pagamento | 2023-02-20 → 2023-03-08 (+16d) | 2023-02-21 → 2023-03-10 (+17d) | 1d → 2d | 1d → 3d |
| 32 | **INTEGRAZIONE CON DATABASE** | 2023-02-22 → 2023-03-15 (+21d) | 2023-03-09 → 2023-04-07 (+29d) | 11d → 17d |  |
| 33 | **Progettazione del database** | 2023-02-22 → 2023-03-15 (+21d) | 2023-03-02 → 2023-03-23 (+21d) |  |  |
| 34 | schema concettuale | 2023-02-22 → 2023-03-15 (+21d) | 2023-02-28 → 2023-03-21 (+21d) |  |  |
| 35 | schema logico | 2023-02-28 → 2023-03-21 (+21d) | 2023-03-02 → 2023-03-23 (+21d) |  |  |
| 36 | **creazione e implementazione database** | 2023-03-02 → 2023-03-23 (+21d) | 2023-03-09 → 2023-04-07 (+29d) | 5d → 11d |  |
| 37 | gestione materie prime | 2023-03-02 → 2023-03-23 (+21d) | 2023-03-06 → 2023-03-29 (+23d) | 2d → 4d |  |
| 38 | gestione prodotti finiti | 2023-03-06 → 2023-03-29 (+23d) | 2023-03-08 → 2023-04-04 (+27d) | 2d → 4d |  |
| 39 | contatti fornitori | 2023-03-08 → 2023-04-04 (+27d) | 2023-03-09 → 2023-04-07 (+29d) | 1d → 3d |  |
| 40 | **INTEGRAZIONE CASSA** | 2023-03-09 → 2023-04-07 (+29d) | 2023-03-16 → 2023-04-24 (+39d) | 5d → 11d |  |
| 41 | creazione profilo amministratore-cassiere | 2023-03-09 → 2023-04-07 (+29d) | 2023-03-10 → 2023-04-12 (+33d) | 1d → 3d |  |
| 42 | implementazione metodi pagamento | 2023-03-09 → 2023-04-07 (+29d) | 2023-03-10 → 2023-04-12 (+33d) | 1d → 3d |  |
| 43 | **INTEGRAZIONE DI ANALISI E STATISTICA** | 2023-03-09 → 2023-04-07 (+29d) | 2023-03-13 → 2023-04-13 (+31d) | 2d → 4d | 3d → 7d |
| 44 | adozione programmi per report periodici | 2023-03-09 → 2023-04-07 (+29d) | 2023-03-13 → 2023-04-13 (+31d) | 2d → 4d | 3d → 7d |
| 45 | **RIORGANIZZAZIONE RISORSE UMANE** | 2023-03-10 → 2023-04-12 (+33d) | 2023-03-16 → 2023-04-24 (+39d) | 4d → 8d |  |
| 46 | code separate | 2023-03-10 → 2023-04-12 (+33d) | 2023-03-16 → 2023-04-24 (+39d) | 4d → 8d |  |
| 47 | consegna in classe | 2023-03-10 → 2023-04-12 (+33d) | 2023-03-16 → 2023-04-24 (+39d) | 4d → 8d |  |
| 48 | **COLLAUDO - CHIUSURA** | 2023-03-16 → 2023-04-24 (+39d) | 2023-03-24 → 2023-05-09 (+46d) | 6d → 11d |  |
| 49 | Verbali riunioni | 2023-03-16 → 2023-04-24 (+39d) | 2023-03-20 → 2023-04-28 (+39d) | 2d → 4d | 1d → 2d |
| 50 | Documenti di revisione | 2023-03-16 → 2023-04-24 (+39d) | 2023-03-20 → 2023-04-28 (+39d) | 2d → 4d | 1d → 2d |
| 51 | Testing | 2023-03-16 → 2023-04-24 (+39d) | 2023-03-21 → 2023-05-02 (+42d) | 3d → 6d |  |
| 52 | Chiusura | 2023-03-21 → 2023-05-02 (+42d) | 2023-03-23 → 2023-05-04 (+42d) |  |  |
| 53 | Presentazione e consegna del prodotto finale | 2023-03-23 → 2023-05-04 (+42d) | 2023-03-24 → 2023-05-09 (+46d) | 1d → 3d |  |
